# 新版本健康管理平台项目计划

Schedule from MS Project, 2016-10-13 to 2016-12-13.
Microsoft

## Calendars

- 标准: Mon-Fri 08:00-12:00, 13:00-17:00; Sat-Sun off. Exceptions (off unless hours are given): 2016-10-15 08:00-12:00, 13:00-17:00, 2016-10-29 (工作日2).

## Resources

| Resource |
| --- |
| 闫兴魁 |
| 测试组 |
| 鞠文广 |
| 李忠瑞 |

## Schedule

| ID | WBS | Task | Duration | Start | Finish | Predecessors | Total slack | Free slack | Constraint | Resources | Work | 完成度 |
| --- | --- | --- | --- | --- | --- | --- | --- | --- | --- | --- | --- | --- |
| 1 | 1 | **制定架构设计方案** | 9.5d | 2016-10-13 | 2016-10-25 |  | 35.5d |  |  |  | 84h |  |
| 2 | 1.1 | 讨论会 | 0.5d | 2016-10-13 | 2016-10-13 |  | 10.5d |  | start no earlier than 2016-10-13 | 鞠文广 | 4h | 100% |
| 3 | 1.2 | 与相关同事讨论并修改 | 3d | 2016-10-17 | 2016-10-19 |  | 5d |  | start no earlier than 2016-10-17 | 鞠文广 | 24h | 40% |
| 4 | 1.3 | 落实使用的技术框架与库 | 1d | 2016-10-21 | 2016-10-21 |  | 3d |  | start no earlier than 2016-10-21 | 鞠文广 | 8h |  |
| 5 | 1.4 | 制定代码规范 | 0.5d | 2016-10-21 | 2016-10-21 |  | 3.5d |  | start no earlier than 2016-10-21 | 鞠文广 | 4h |  |
| 6 | 1.5 | **对外API设计** | 2d | 2016-10-18 | 2016-10-19 |  | 39d |  |  | 鞠文广 | 32h |  |
| 7 | 1.5.1 | 接口梳理（疾病管理+健康管理） | 1d | 2016-10-18 | 2016-10-18 |  | 5d | 0d | start no earlier than 2016-10-18 | 鞠文广 | 8h |  |
| 8 | 1.5.2 | 设计 | 1d | 2016-10-19 | 2016-10-19 | 7 | 5d |  |  | 鞠文广 | 8h |  |
| 9 | 1.6 | 架构讨论 | 1d | 2016-10-24 | 2016-10-24 |  | 2d |  | start no earlier than 2016-10-24 | 鞠文广 | 8h |  |
| 10 | 1.7 | 评审会 | 0.5d | 2016-10-25 | 2016-10-25 |  | 1.5d |  | start no earlier than 2016-10-25 | 鞠文广 | 4h |  |
| 11 | 2 | **架构DEMO** | 7d | 2016-10-13 | 2016-10-20 |  | 38d |  |  |  | 72h |  |
| 12 | 2.1 | 集成shiro实现认证功能 | 1d | 2016-10-13 | 2016-10-13 |  | 10d |  | start no earlier than 2016-10-13 | 闫兴魁 | 8h |  |
| 13 | 2.2 | 集成spring session支持分布式session | 1d | 2016-10-14 | 2016-10-14 |  | 9d |  |  | 鞠文广 | 8h |  |
| 14 | 2.3 | 集成分布式文件服务 | 1d | 2016-10-14 | 2016-10-14 |  | 9d |  |  | 闫兴魁 | 8h |  |
| 15 | 2.4 | 集成分布式缓存redis | 1d | 2016-10-15 | 2016-10-15 |  | 6d | 0d | start no earlier than 2016-10-15 | 鞠文广 | 8h |  |
| 16 | 2.5 | 修改bug | 1.5d | 2016-10-17 | 2016-10-18 | 15 | 39d |  |  | 闫兴魁 | 12h |  |
| 17 | 2.6 | 开发环境搭建文档 | 0.5d | 2016-10-18 | 2016-10-18 | 16 | 39d | 0d |  | 闫兴魁 | 4h |  |
| 18 | 2.7 | 测试DEMO系统和检查文档 | 1d | 2016-10-18 | 2016-10-18 |  | 39d | 0d | start no earlier than 2016-10-18 | 李忠瑞 | 8h |  |
| 19 | 2.8 | 系统完善 | 1d | 2016-10-19 | 2016-10-19 | 18 | 39d |  |  | 闫兴魁 | 8h |  |
| 20 | 2.9 | 压力测试 | 1d | 2016-10-20 | 2016-10-20 |  | 4d |  | start no earlier than 2016-10-20 | 测试组 | 8h |  |
| 21 | 3 | 研发流程 | 0.5d | 2016-10-18 | 2016-10-18 |  | 6.5d |  | start no earlier than 2016-10-18 | 鞠文广 | 4h |  |
| 22 | 4 | **单点登录** | 7d | 2016-10-19 | 2016-10-27 |  | 33d |  |  |  | 28h |  |
| 23 | 4.1 | 学习区域注册中心方案 | 0.5d | 2016-10-19 | 2016-10-19 |  | 38.5d | 0d | start no earlier than 2016-10-19 | 鞠文广 | 4h |  |
| 24 | 4.2 | 了解各系统的认证与权限部分：母婴，健康管理，疾病管理，虚拟柜台，His | 1d | 2016-10-19 | 2016-10-20 | 23 | 38.5d |  | finish no earlier than 2016-10-19 | 鞠文广 | 8h |  |
| 25 | 4.3 | 设计方案 | 2d | 2016-10-26 | 2016-10-27 |  | 33d |  | start no earlier than 2016-10-26 | 鞠文广 | 16h |  |

| ID | WBS | Task | Duration | Start | Finish | Predecessors | Total slack | Constraint | Resources | Work |
| --- | --- | --- | --- | --- | --- | --- | --- | --- | --- | --- |
| 26 | 5 | **数据库迁移** | 9d | 2016-10-18 | 2016-10-28 |  | 32d |  |  | 32h |
| 27 | 5.1 | 了解健康管理平台的数据库表 | 1d | 2016-10-18 | 2016-10-18 |  | 40d | start no earlier than 2016-10-18 | 鞠文广 | 8h |
| 28 | 5.2 | 详细设计 | 3d | 2016-10-26 | 2016-10-28 |  | 32d | start no earlier than 2016-10-26 | 鞠文广 | 24h |
| 29 | 6 | 需求分析 | 2d | 2016-10-31 | 2016-11-01 |  | 30d | start no earlier than 2016-10-31 | 鞠文广 | 16h |
| 30 | 7 | **设计** | 15d | 2016-11-01 | 2016-11-21 |  | 0d |  |  | 8h |
| 31 | 7.1 | 设计组件图 | 1d | 2016-11-01 | 2016-11-01 |  | 0d | start no earlier than 2016-11-01 | 鞠文广 | 8h |
| 32 | 7.2 | 类图 | 3d | 2016-11-02 | 2016-11-04 | 31 | 0d |  |  |  |
| 33 | 7.3 | 三方库封装 | 5d | 2016-11-02 | 2016-11-08 | 31 | 9d |  |  |  |
| 34 | 7.4 | 对外API设计 | 3d | 2016-11-02 | 2016-11-04 | 31 | 11d |  |  |  |
| 35 | 7.5 | 内部接口设计 | 10d | 2016-11-07 | 2016-11-18 | 32 | 0d |  |  |  |
| 36 | 7.6 | 设计评审 | 1d | 2016-11-21 | 2016-11-21 | 35 | 0d |  |  |  |
| 37 | 8 | **开发与测试** | 8d? | 2016-11-22 | 2016-12-01 |  | 0d |  |  |  |
| 38 | 8.1 | web应用 | 1d? | 2016-11-22 | 2016-11-22 | 36 | 0d |  |  |  |
| 39 | 8.2 | 数据库迁移 | 1d? | 2016-11-23 | 2016-11-23 | 38 | 0d |  |  |  |
| 40 | 8.3 | 对外API | 1d? | 2016-11-24 | 2016-11-24 | 39 | 0d |  |  |  |
| 41 | 8.4 | 集成测试 | 5d | 2016-11-25 | 2016-12-01 | 40 | 0d |  |  |  |
| 42 | 9 | 上线部署 | 5d | 2016-12-02 | 2016-12-08 | 41 | 0d |  |  |  |
| 43 | 10 | 试运行 | 3d | 2016-12-09 | 2016-12-13 | 42 | 0d |  |  |  |
